# Отчеты

Schedule from MS Project, 2010-10-01 to 2011-08-17, status date 2022-10-21, costs in ₽, A marks actual dates.

## Calendars

- Стандартный: Mon-Fri 09:00-13:00, 14:00-18:00; Sat-Sun off.

## Resources

| Resource | Rate | Cost per use |
| --- | --- | --- |
| Главбух | 562.5 | 30000 |
| Администратор | 437.5 | 40000 |
| Программист | 375 | 50000 |
| Техник | 250 |  |
| Расчетчик1 | 250 |  |
| Расчетчик2 | 250 |  |
| Расчетчик3 | 250 |  |
| Бухгалтер мат. учета1 | 250 |  |
| Бухгалтер мат. учета2 | 250 |  |
| Бухгалтер учета ОС и НМА | 250 |  |
| Бухгалтер учета ОС | 250 |  |
| Бухгалтер учета реализации | 250 |  |
| Бухгалтер производ-ственного учета | 250 |  |
| Компьютер | 15000 |  |
| Сервер | 50000 |  |
| Принтер | 5000 |  |
| МФУ | 7000 |  |
| Сетевой кабель |  | 15000 |
| Сетевой концентратор | 3000 |  |
| Панель |  | 10000 |
| Разъемы и розетки |  | 15000 |
| Бухгалтерская система |  | 100000 |
| Офисный пакет |  | 70000 |
| ОС рабочей станции |  | 60000 |
| Серверная ОС |  | 30000 |
| DVD-матрица | 10 |  |
| Интернет |  |  |
| Междугородние переговоры |  |  |
| Оплата курсов |  |  |
| Бухгалтер производ. учета |  |  |
| Бухгалтер производственного учета |  |  |
| Бухгалтер производс. учета |  |  |

## Schedule

| ID | WBS | Task | Type | Duration | Start | Finish | Predecessors | Complete | Remaining | Total slack | Free slack | Constraint | Resources | Work | Actual work | Cost | Actual cost |
| --- | --- | --- | --- | --- | --- | --- | --- | --- | --- | --- | --- | --- | --- | --- | --- | --- | --- |
| 1 | 1 | Начало проекта | milestone | 0d | 2010-10-01 A | 2010-10-01 A |  | 100% |  |  |  | start no earlier than 2010-10-01 |  |  |  |  |  |
| 2 | 2 | **Выбор системы** |  | 16d | 2010-10-01 A | 2010-10-22 |  | 99% | 0d | 213d |  |  |  | 155.2h | 155.2h | 267,300 | 267,300 |
| 3 | 2.1 | Изучение рынка бухгалтерских систем |  | 7d | 2010-10-01 A | 2010-10-11 | 1 | 99% | 0d | 7d | 0d |  | Администратор; Интернет [0.1%] | 56h | 56h | 64,500 | 64,500 |
| 4 | 2.2 | Составление требований к бухгалтерским системам |  | 7d | 2010-10-01 A | 2010-10-11 | 1 | 99% | 0d | 7d | 0d |  | Администратор; Главбух [20%] | 11.2h | 11.2h | 52,300 | 52,300 |
| 5 | 2.3 | Консультации с фирмами-разработчиками |  | 7d | 2010-10-12 A | 2010-10-20 | 3, 4 | 99% | 0d | 215d |  |  | Администратор; Междугородние переговоры [0.1%]; Интернет [0.1%] | 56h | 56h | 64,500 | 64,500 |
| 6 | 2.4 | Принятие окончательного решения |  | 2d | 2010-10-21 A | 2010-10-22 A | 5 | 100% |  |  |  |  | Администратор; Главбух | 32h | 32h | 86,000 | 86,000 |
| 7 | 2.5 | Выбор завершен | milestone | 0d | 2010-10-22 A | 2010-10-22 A | 6 | 100% |  |  |  |  |  |  |  |  |  |
| 8 | 3 | **Приобретение программного обеспечения** |  | 16d | 2010-10-22 A | 2010-11-15 |  | 99% | 0d | 197d |  |  |  | 56.8h | 56.8h | 412,700 | 412,700 |
| 9 | 3.1 | Заключение договоров |  | 6d | 2010-10-22 A | 2010-11-01 | 7 | 99% | 0d | 207d |  |  | Администратор; Программист; Главбух | 48h | 48h | 147,000 | 147,000 |
| 10 | 3.2 | Оплата за ПО |  | 2d | 2010-11-02 A | 2010-11-03 A | 9 | 100% |  |  |  |  | Главбух [10%]; Бухгалтерская система; Офисный пакет; ОС рабочей станции; Серверная ОС | 1.6h | 1.6h | 263,900 | 263,900 |
| 11 | 3.3 | Оформление ПО на баланс |  | 3d | 2010-11-11 A | 2010-11-15 A | 10FS+5d | 100% |  |  |  |  | Бухгалтер учета ОС [30%] | 7.2h | 7.2h | 1,800 | 1,800 |
| 12 | 3.4 | Приобретение ПО завершено | milestone | 0d | 2010-11-15 A | 2010-11-15 A | 11 | 100% |  |  |  |  |  |  |  |  |  |
| 13 | 4 | **Составление проекта сети** |  | 12d | 2010-10-25 A | 2010-11-09 |  | 99% | 0d | 201d |  |  |  | 192.8h | 192.8h | 250,700 | 250,700 |
| 14 | 4.1 | Разработка архитектуры сети |  | 7d | 2010-10-25 A | 2010-11-02 A | 7 | 100% |  |  |  |  | Администратор; Программист; Техник [50%] | 128.8h | 128.8h | 139,700 | 139,700 |
| 15 | 4.2 | Проработка физического размещения сети |  | 5d | 2010-11-02 A | 2010-11-09 | 14 | 99% | 0d | 201d |  |  | Администратор; Программист; Техник | 64h | 64h | 111,000 | 111,000 |
| 16 | 4.3 | Проект сети завершен | milestone | 0d | 2010-11-09 A | 2010-11-09 A | 15 | 100% |  |  |  |  |  |  |  |  |  |
| 17 | 5 | **Приобретение компьютеров и сетевого оборудования** |  | 27d | 2010-11-03 A | 2010-12-09 |  | 99% | 0d | 179d |  |  |  | 137.6h | 137.6h | 468,150 | 468,150 |
| 18 | 5.1 | Сбор информации о поставщиках и предложениях |  | 7d | 2010-11-03 A | 2010-11-11 | 7 | 99% | 0d | 0d |  |  | Администратор [50%]; Интернет [0.1%]; Междугородние переговоры [0.1%] | 28h | 28h | 32,250 | 32,250 |
| 19 | 5.2 | Анализ и выбор поставщика |  | 5d | 2010-11-12 A | 2010-11-18 | 14, 18 | 99% | 0d | 194d |  |  | Администратор [50%]; Главбух [20%]; Интернет [0.1%] | 28h | 28h | 39,250 | 39,250 |
| 20 | 5.3 | Заключение договоров |  | 5d | 2010-11-19 A | 2010-11-25 A | 19 | 100% |  |  |  |  | Администратор; Главбух [50%] | 60h | 60h | 83,750 | 83,750 |
| 21 | 5.4 | Оплата за оборудование |  | 2d | 2010-11-26 A | 2010-11-29 A | 20 | 100% |  |  |  |  | Главбух [30%]; Компьютер [1200%]; Сервер; Принтер [200%]; МФУ [200%]; Сетевой кабель [200%]; Сетевой концентратор; Панель; Разъемы и розетки | 4.8h | 4.8h | 308,700 | 308,700 |
| 22 | 5.5 | Оформление оборудования на баланс |  | 3d | 2010-12-07 A | 2010-12-09 A | 21FS+5d | 100% |  |  |  |  | Бухгалтер учета ОС [70%] | 16.8h | 16.8h | 4,200 | 4,200 |
| 23 | 5.6 | Приобретение оборудования завершено | milestone | 0d | 2010-12-09 A | 2010-12-09 A | 22 | 100% |  |  |  |  |  |  |  |  |  |
| 24 | 6 | **Обучение администратора и программиста** |  | 29d | 2010-11-16 A | 2010-12-24 |  | 99% | 0d | 168d |  |  |  | 336h | 336h | 316,500 | 316,500 |
| 25 | 6.1 | Курсы администраторов |  | 18d | 2010-11-26 A | 2010-12-21 | 16 | 99% | 0d | 171d |  |  | Администратор; Оплата курсов [0.1%] | 144h | 144h | 103,000 | 103,000 |
| 26 | 6.2 | Курсы программистов |  | 18d | 2010-11-16 A | 2010-12-09 | 12 | 99% | 0d | 179d |  |  | Программист; Оплата курсов [0.1%] | 144h | 144h | 104,000 | 104,000 |
| 27 | 6.3 | Сдача сертификационных экзаменов |  | 3d | 2010-12-22 A | 2010-12-24 A | 25, 26 | 100% |  |  |  |  | Администратор; Программист | 48h | 48h | 109,500 | 109,500 |
| 28 | 6.4 | Обучение завершено | milestone | 0d | 2010-12-24 A | 2010-12-24 A | 27 | 100% |  |  |  |  |  |  |  |  |  |

| ID | WBS | Task | Type | Duration | Start | Finish | Predecessors | Complete | Remaining | Total slack | Free slack | Constraint | Resources | Work | Actual work | Cost | Actual cost |
| --- | --- | --- | --- | --- | --- | --- | --- | --- | --- | --- | --- | --- | --- | --- | --- | --- | --- |
| 29 | 7 | **Монтаж локальной сети** |  | 28d | 2010-12-10 A | 2011-01-18 A |  | 100% |  |  |  |  |  | 224h | 224h | 56,000 | 56,000 |
| 30 | 7.1 | Установка компьютеров на рабочих местах |  | 3d | 2011-01-07 A | 2011-01-11 A | 23 | 100% |  |  |  |  | Техник | 24h | 24h | 6,000 | 6,000 |
| 31 | 7.2 | Монтаж кабеля |  | 10d | 2010-12-10 A | 2010-12-23 A | 23 | 100% |  |  |  |  | Техник | 80h | 80h | 20,000 | 20,000 |
| 32 | 7.3 | Монтаж сетевых устройств |  | 10d | 2010-12-24 A | 2011-01-06 A | 23 | 100% |  |  |  |  | Техник | 80h | 80h | 20,000 | 20,000 |
| 33 | 7.4 | Подключение кабеля к компьютерам и сетевым устройствам |  | 5d | 2011-01-12 A | 2011-01-18 A | 30, 31, 32 | 100% |  |  |  |  | Техник | 40h | 40h | 10,000 | 10,000 |
| 34 | 7.5 | Монтаж завершен | milestone | 0d | 2011-01-18 A | 2011-01-18 A | 33 | 100% |  |  |  |  |  |  |  |  |  |
| 35 | 8 | **Установка ПО на компьютеры** |  | 17d | 2011-01-19 A | 2011-02-10 A |  | 100% |  |  |  |  |  | 176h | 176h | 244,500 | 244,500 |
| 36 | 8.1 | Установка сервера |  | 5d | 2011-01-19 A | 2011-01-25 A | 34 | 100% |  |  |  |  | Администратор | 40h | 40h | 57,500 | 57,500 |
| 37 | 8.2 | Создание доменов и пользователей |  | 7d | 2011-01-26 A | 2011-02-03 A | 36 | 100% |  |  |  |  | Администратор | 56h | 56h | 64,500 | 64,500 |
| 38 | 8.3 | Проверка и настройка работы сети |  | 5d | 2011-02-04 A | 2011-02-10 A | 37 | 100% |  |  |  |  | Администратор; Программист | 80h | 80h | 122,500 | 122,500 |
| 39 | 8.4 | Настройка сети завершена | milestone | 0d | 2011-02-10 A | 2011-02-10 A | 38 | 100% |  |  |  |  |  |  |  |  |  |
| 40 | 9 | **Ввод начальных данных** |  | 96d | 2011-02-11 A | 2011-06-24 A |  | 100% |  |  |  |  |  | 2688h | 2688h | 1,077,200 | 1,077,200 |
| 41 | 9.1 | Ввод справочников |  | 40d | 2011-02-11 A | 2011-04-07 A | 39 | 100% |  |  |  |  | Администратор; Программист; Расчетчик1 [30%]; Расчетчик2 [30%]; Расчетчик3 [30%]; Бухгалтер мат. учета1 [50%]; Бухгалтер мат. учета2 [50%]; Бухгалтер учета ОС и НМА [50%]; Бухгалтер учета ОС [50%]; Бухгалтер учета реализации [50%]; Бухгалтер производ. учета [50%]; DVD-матрица [1000%] | 1888h | 1888h | 622,100 | 622,100 |
| 42 | 9.2 | Ввод начальных остатков |  | 40d | 2011-05-02 A | 2011-06-24 A | 41 | 100% |  |  |  | start no earlier than 2011-05-01 | Администратор; Программист; Главбух [50%]; DVD-матрица [1000%] | 800h | 800h | 455,100 | 455,100 |
| 43 | 9.3 | Ввод начальных данных завершен | milestone | 0d | 2011-06-24 A | 2011-06-24 A | 42 | 100% |  |  |  |  |  |  |  |  |  |
| 44 | 10 | **Обучение персонала** |  | 126d | 2011-02-10 A | 2011-08-05 |  | 99% | 0d | 8d |  |  |  | 2280h | 2280h | 754,500 | 754,500 |
| 45 | 10.1 | Принципы работы системы |  | 3d | 2011-02-10 A | 2011-02-15 | 39 | 99% | 0d | 5d | 0d |  | Администратор [50%]; Главбух [50%]; Расчетчик1 [50%]; Расчетчик2 [50%]; Расчетчик3 [50%]; Бухгалтер мат. учета1 [50%]; Бухгалтер мат. учета2 [50%]; Бухгалтер учета ОС и НМА [50%]; Бухгалтер учета ОС [50%]; Бухгалтер учета реализации [50%]; Бухгалтер производ. учета [50%] | 120h | 120h | 65,750 | 65,750 |
| 46 | 10.2 | Изучение интерфейса |  | 5d | 2011-02-15 A | 2011-02-22 | 45 | 99% | 0d | 20d | 0d |  | Программист [50%]; Главбух [50%]; Расчетчик1 [50%]; Расчетчик2 [50%]; Расчетчик3 [50%]; Бухгалтер мат. учета1 [50%]; Бухгалтер мат. учета2 [50%]; Бухгалтер учета ОС и НМА [50%]; Бухгалтер учета ОС [50%]; Бухгалтер учета реализации [50%]; Бухгалтер производственного учета [50%] | 200h | 200h | 91,250 | 91,250 |
| 47 | 10.3 | Изучение справочников |  | 20d | 2011-02-22 A | 2011-03-22 | 41SS+5d, 46 | 99% | 0d | 106d |  |  | Программист [50%]; Главбух [50%]; Расчетчик1 [50%]; Расчетчик2 [50%]; Расчетчик3 [50%]; Бухгалтер мат. учета1 [50%]; Бухгалтер мат. учета2 [50%]; Бухгалтер производ. учета [50%]; Бухгалтер учета ОС [50%] | 640h | 640h | 205,000 | 205,000 |
| 48 | 10.4 | Изучение документов и журналов |  | 30d | 2011-06-27 A | 2011-08-05 A | 42, 47 | 100% |  |  |  |  | Программист [50%]; Главбух [50%]; Расчетчик1 [50%]; Расчетчик2 [50%]; Расчетчик3 [50%]; Бухгалтер мат. учета1 [50%]; Бухгалтер мат. учета2 [50%]; Бухгалтер учета ОС и НМА [50%]; Бухгалтер учета ОС [50%]; Бухгалтер учета реализации [50%]; Бухгалтер производс. учета [50%] | 1320h | 1320h | 392,500 | 392,500 |
| 49 | 10.5 | Обучение завершено | milestone | 0d | 2011-08-05 A | 2011-08-05 A | 48 | 100% |  |  |  |  |  |  |  |  |  |
| 50 | 11 | **Передача в эксплуатацию** |  | 8d | 2011-08-08 A | 2011-08-17 A |  | 100% |  |  |  |  |  | 144h | 144h | 222,000 | 222,000 |
| 51 | 11.1 | Формирование тестовой отчетности |  | 5d | 2011-08-08 A | 2011-08-12 A | 49 | 100% |  |  |  |  | Администратор; Программист; Главбух | 120h | 120h | 175,000 | 175,000 |
| 52 | 11.2 | Акт ввода в эксплуатацию |  | 3d | 2011-08-15 A | 2011-08-17 A | 51 | 100% |  |  |  |  | Администратор [50%]; Главбух [50%] | 24h | 24h | 47,000 | 47,000 |
| 53 | 11.3 | Передача в эксплуатацию завершена | milestone | 0d | 2011-08-17 A | 2011-08-17 A | 52 | 100% |  |  |  |  |  |  |  |  |  |
| 54 | 12 | Конец проекта | milestone | 0d | 2011-08-17 A | 2011-08-17 A | 53 | 100% |  |  |  |  |  |  |  |  |  |
