# Бух2_6

Schedule from MS Project, 2010-10-01 to 2011-08-17.

## Calendars

- Стандартный: Mon-Fri 09:00-13:00, 14:00-18:00; Sat-Sun off.

## Schedule

| ID | WBS | Task | Type | Duration | Start | Finish | Predecessors | Total slack | Free slack | Constraint |
| --- | --- | --- | --- | --- | --- | --- | --- | --- | --- | --- |
| 1 | 1 | Начало проекта | milestone | 0d | 2010-10-01 | 2010-10-01 |  | 36d | 0d | start no earlier than 2010-10-01 |
| 2 | 2 | **Выбор системы** |  | 16d | 2010-10-01 | 2010-10-22 |  | 36d |  |  |
| 3 | 2.1 | Изучение рынка бухгалтерских систем |  | 7d | 2010-10-01 | 2010-10-11 | 1 | 36d | 0d |  |
| 4 | 2.2 | Составление требований к бухгалтерским системам |  | 7d | 2010-10-01 | 2010-10-11 | 1 | 36d | 0d |  |
| 5 | 2.3 | Консультации с фирмами-разработчиками |  | 7d | 2010-10-12 | 2010-10-20 | 3, 4 | 36d | 0d |  |
| 6 | 2.4 | Принятие окончательного решения |  | 2d | 2010-10-21 | 2010-10-22 | 5 | 36d | 0d |  |
| 7 | 2.5 | Выбор завершен | milestone | 0d | 2010-10-22 | 2010-10-22 | 6 | 36d | 0d |  |
| 8 | 3 | **Приобретение программного обеспечения** |  | 16d | 2010-10-25 | 2010-11-15 |  | 176d |  |  |
| 9 | 3.1 | Заключение договоров |  | 6d | 2010-10-25 | 2010-11-01 | 7 | 176d | 0d |  |
| 10 | 3.2 | Оплата за ПО |  | 2d | 2010-11-02 | 2010-11-03 | 9 | 176d | 0d |  |
| 11 | 3.3 | Оформление ПО на баланс |  | 3d | 2010-11-11 | 2010-11-15 | 10FS+5d | 176d | 0d |  |
| 12 | 3.4 | Приобретение ПО завершено | milestone | 0d | 2010-11-15 | 2010-11-15 | 11 | 176d | 0d |  |
| 13 | 4 | **Составление проекта сети** |  | 12d | 2010-10-25 | 2010-11-09 |  | 36d |  |  |
| 14 | 4.1 | Разработка архитектуры сети |  | 7d | 2010-10-25 | 2010-11-02 | 7 | 36d | 0d |  |
| 15 | 4.2 | Проработка физического размещения сети |  | 5d | 2010-11-03 | 2010-11-09 | 14 | 180d | 0d |  |
| 16 | 4.3 | Проект сети завершен | milestone | 0d | 2010-11-09 | 2010-11-09 | 15 | 180d | 0d |  |
| 17 | 5 | **Приобретение компьютеров и сетевого оборудования** |  | 27d | 2010-10-25 | 2010-11-30 |  | 36d |  |  |
| 18 | 5.1 | Сбор информации о поставщиках и предложениях |  | 7d | 2010-10-25 | 2010-11-02 | 7 | 36d | 0d |  |
| 19 | 5.2 | Анализ и выбор поставщика |  | 5d | 2010-11-03 | 2010-11-09 | 14, 18 | 36d | 0d |  |
| 20 | 5.3 | Заключение договоров |  | 5d | 2010-11-10 | 2010-11-16 | 19 | 36d | 0d |  |
| 21 | 5.4 | Оплата за оборудование |  | 2d | 2010-11-17 | 2010-11-18 | 20 | 36d | 0d |  |
| 22 | 5.5 | Оформление оборудования на баланс |  | 3d | 2010-11-26 | 2010-11-30 | 21FS+5d | 36d | 0d |  |
| 23 | 5.6 | Приобретение оборудования завершено | milestone | 0d | 2010-11-30 | 2010-11-30 | 22 | 36d | 0d |  |
| 24 | 6 | **Обучение администратора и программиста** |  | 25d | 2010-11-10 | 2010-12-14 |  | 176d |  |  |
| 25 | 6.1 | Курсы администраторов |  | 18d | 2010-11-10 | 2010-12-03 | 16 | 180d | 4d |  |
| 26 | 6.2 | Курсы программистов |  | 18d | 2010-11-16 | 2010-12-09 | 12 | 176d | 0d |  |
| 27 | 6.3 | Сдача сертификационных экзаменов |  | 3d | 2010-12-10 | 2010-12-14 | 25, 26 | 176d | 0d |  |
| 28 | 6.4 | Обучение завершено | milestone | 0d | 2010-12-14 | 2010-12-14 | 27 | 176d |  |  |

| ID | WBS | Task | Type | Duration | Start | Finish | Predecessors | Total slack | Free slack | Constraint |
| --- | --- | --- | --- | --- | --- | --- | --- | --- | --- | --- |
| 29 | 7 | **Монтаж локальной сети** |  | 15d | 2010-12-01 | 2010-12-21 |  | 36d |  |  |
| 30 | 7.1 | Установка компьютеров на рабочих местах |  | 3d | 2010-12-01 | 2010-12-03 | 23 | 43d | 7d |  |
| 31 | 7.2 | Монтаж кабеля |  | 10d | 2010-12-01 | 2010-12-14 | 23 | 36d | 0d |  |
| 32 | 7.3 | Монтаж сетевых устройств |  | 10d | 2010-12-01 | 2010-12-14 | 23 | 36d | 0d |  |
| 33 | 7.4 | Подключение кабеля к компьютерам и сетевым устройствам |  | 5d | 2010-12-15 | 2010-12-21 | 30, 31, 32 | 36d | 0d |  |
| 34 | 7.5 | Монтаж завершен | milestone | 0d | 2010-12-21 | 2010-12-21 | 33 | 36d | 0d |  |
| 35 | 8 | **Установка ПО на компьютеры** |  | 17d | 2010-12-22 | 2011-01-13 |  | 36d |  |  |
| 36 | 8.1 | Установка сервера |  | 5d | 2010-12-22 | 2010-12-28 | 34 | 36d | 0d |  |
| 37 | 8.2 | Создание доменов и пользователей |  | 7d | 2010-12-29 | 2011-01-06 | 36 | 36d | 0d |  |
| 38 | 8.3 | Проверка и настройка работы сети |  | 5d | 2011-01-07 | 2011-01-13 | 37 | 36d | 0d |  |
| 39 | 8.4 | Настройка сети завершена | milestone | 0d | 2011-01-13 | 2011-01-13 | 38 | 36d | 0d |  |
| 40 | 9 | **Ввод начальных данных** |  | 116d | 2011-01-14 | 2011-06-24 |  | 36d |  |  |
| 41 | 9.1 | Ввод справочников |  | 40d | 2011-01-14 | 2011-03-10 | 39 | 36d | 3d |  |
| 42 | 9.2 | Ввод начальных остатков |  | 40d | 2011-05-02 | 2011-06-24 | 41 | 0d |  | start no earlier than 2011-05-01 |
| 43 | 9.3 | Ввод начальных данных завершен | milestone | 0d | 2011-06-24 | 2011-06-24 | 42 | 38d |  |  |
| 44 | 10 | **Обучение персонала** |  | 146d | 2011-01-14 | 2011-08-05 |  | 0d |  |  |
| 45 | 10.1 | Принципы работы системы |  | 3d | 2011-01-14 | 2011-01-18 | 39 | 88d | 0d |  |
| 46 | 10.2 | Изучение интерфейса |  | 5d | 2011-01-19 | 2011-01-25 | 45 | 88d | 0d |  |
| 47 | 10.3 | Изучение справочников |  | 20d | 2011-01-26 | 2011-02-22 | 41SS+5d, 46 | 88d |  |  |
| 48 | 10.4 | Изучение документов и журналов |  | 30d | 2011-06-27 | 2011-08-05 | 42, 47 | 0d |  |  |
| 49 | 10.5 | Обучение завершено | milestone | 0d | 2011-08-05 | 2011-08-05 | 48 | 0d |  |  |
| 50 | 11 | **Передача в эксплуатацию** |  | 8d | 2011-08-08 | 2011-08-17 |  | 0d |  |  |
| 51 | 11.1 | Формирование тестовой отчетности |  | 5d | 2011-08-08 | 2011-08-12 | 49 | 0d |  |  |
| 52 | 11.2 | Акт ввода в эксплуатацию |  | 3d | 2011-08-15 | 2011-08-17 | 51 | 0d |  |  |
| 53 | 11.3 | Передача в эксплуатацию завершена | milestone | 0d | 2011-08-17 | 2011-08-17 | 52 | 0d |  |  |
| 54 | 12 | Конец проекта | milestone | 0d | 2011-08-17 | 2011-08-17 | 53 | 0d |  |  |
